# Beeblz-Social Graph for Facebook

Schedule from MS Project, 2010-12-16 to 2011-02-20, A marks actual dates.

## Calendars

- 표준: Mon-Fri 08:00-12:00, 13:00-17:00; Sat-Sun off. Exceptions (off unless hours are given): 2010-12-01 to 2011-12-31 08:00-12:00, 13:00-17:00.

## Resources

| Resource |
| --- |
| 배영규 |

## Schedule

| ID | WBS | Task | Duration | Start | Finish | Predecessors | Complete | Remaining | Total slack | Constraint | Resources | Work | Actual work |
| --- | --- | --- | --- | --- | --- | --- | --- | --- | --- | --- | --- | --- | --- |
| 1 | 1 | **관리** | 1d | 2011-01-15 | 2011-01-15 |  |  |  | 36d |  |  | 8h |  |
| 2 | 1.1 | 도메인 등록 | 1d | 2011-01-15 | 2011-01-15 |  |  |  | 36d | start no earlier than 2011-01-15 | 배영규 | 8h |  |
| 3 | 2 | **설계** | 11d | 2010-12-16 A | 2010-12-26 A |  | 100% |  |  |  |  | 88h | 88h |
| 4 | 2.1 | 기획 | 5d | 2010-12-16 A | 2010-12-20 A |  | 100% |  |  | start no earlier than 2010-12-16 | 배영규 | 40h | 40h |
| 5 | 2.2 | 상세설계 | 6d | 2010-12-21 A | 2010-12-26 A | 4 | 100% |  |  |  | 배영규 | 48h | 48h |
| 6 | 3 | **디자인** | 6d | 2011-02-01 | 2011-02-06 |  |  |  | 14d |  |  |  |  |
| 7 | 3.1 | 로고 | 6d | 2011-02-01 | 2011-02-06 |  |  |  | 14d | start no earlier than 2011-02-01 |  |  |  |
| 8 | 4 | **개발** | 60d | 2010-12-16 A | 2011-02-13 |  | 31% | 41.37d | 0d |  |  | 760h | 236h |
| 9 | 4.1 | Facebook Data Collector | 5d | 2010-12-16 A | 2010-12-20 A |  | 100% |  |  |  | 배영규 | 40h | 40h |
| 10 | 4.2 | Graph 모듈 | 5d | 2010-12-21 A | 2010-12-25 A | 9 | 100% |  |  |  | 배영규 | 40h | 40h |
| 11 | 4.3 | **DAO** | 31d | 2010-12-26 A | 2011-01-25 |  | 12% | 27.35d | 19d |  |  | 272h | 32h |
| 12 | 4.3.1 | Vertex | 2d | 2010-12-26 A | 2010-12-27 A | 10 | 100% |  |  |  | 배영규 | 16h | 16h |
| 13 | 4.3.2 | Edge | 2d | 2010-12-28 A | 2010-12-29 A | 12 | 100% |  |  |  | 배영규 | 16h | 16h |
| 14 | 4.3.3 | Closeness | 10d | 2011-01-16 | 2011-01-25 | 25SS |  |  | 19d |  | 배영규 | 80h |  |
| 15 | 4.3.4 | Friend | 10d | 2011-01-16 | 2011-01-25 | 25SS |  |  | 19d |  | 배영규 | 80h |  |
| 16 | 4.3.5 | Ranking | 10d | 2011-01-16 | 2011-01-25 | 25SS |  |  | 19d |  | 배영규 | 80h |  |
| 17 | 4.4 | **화면** | 36d | 2011-01-04 A | 2011-02-08 |  | 32% | 24.32d | 5d |  |  | 296h | 96h |
| 18 | 4.4.1 | **메인화면** | 6d | 2011-01-04 A | 2011-01-09 |  | 83% | 1d | 35d |  |  | 48h | 40h |
| 19 | 4.4.1.1 | 메인 Panel | 4d | 2011-01-04 A | 2011-01-07 A |  | 100% |  |  | start no earlier than 2011-01-04 | 배영규 | 32h | 32h |
| 20 | 4.4.1.2 | 메인 Applet | 1d | 2011-01-08 A | 2011-01-08 A | 19 | 100% |  |  |  | 배영규 | 8h | 8h |
| 21 | 4.4.1.3 | 메인 JSP | 1d | 2011-01-09 | 2011-01-09 | 20 |  |  | 35d |  | 배영규 | 8h |  |
| 22 | 4.4.2 | 메뉴 | 1d | 2011-01-09 A | 2011-01-09 A | 20 | 100% |  |  |  | 배영규 | 8h | 8h |
| 23 | 4.4.3 | Clustering | 3d | 2011-01-10 A | 2011-01-12 A | 22 | 100% |  |  |  | 배영규 | 24h | 24h |
| 24 | 4.4.4 | Social Graph(Clustering) | 3d | 2011-01-13 A | 2011-01-15 A | 23 | 100% |  |  |  | 배영규 | 24h | 24h |
| 25 | 4.4.5 | Ranking | 1d | 2011-01-16 | 2011-01-16 | 24 |  |  | 0d |  | 배영규 | 8h |  |
| 26 | 4.4.6 | My Friends 테이블 | 6d | 2011-01-17 | 2011-01-22 | 25 |  |  | 0d |  | 배영규 | 48h |  |
| 27 | 4.4.7 | Friends of friend 테이블 | 7d | 2011-01-23 | 2011-01-29 | 26 |  |  | 0d |  | 배영규 | 56h |  |
| 28 | 4.4.8 | Closeness Graph(Ranking) | 4d | 2011-01-30 | 2011-02-02 | 27 |  |  | 0d |  | 배영규 | 32h |  |
| 29 | 4.4.9 | Friend may know 테이블 | 3d | 2011-02-03 | 2011-02-05 | 28 |  |  | 0d |  | 배영규 | 24h |  |
| 30 | 4.4.10 | Graph Share | 3d | 2011-02-06 | 2011-02-08 | 29 |  |  | 0d |  | 배영규 | 24h |  |
| 31 | 4.5 | 웹 페이지 | 5d | 2011-02-09 | 2011-02-13 | 30 |  |  | 0d |  | 배영규 | 40h |  |

| ID | WBS | Task | Duration | Start | Finish | Predecessors | Complete | Remaining | Total slack | Free slack | Constraint | Resources | Work | Actual work |
| --- | --- | --- | --- | --- | --- | --- | --- | --- | --- | --- | --- | --- | --- | --- |
| 32 | 4.6 | **Google Web Engine** | 8d | 2011-01-08 A | 2011-01-15 |  | 44% | 4.5d | 28d |  |  |  | 64h | 28h |
| 33 | 4.6.1 | 사전 리서치 | 7d | 2011-01-08 A | 2011-01-14 |  | 50% | 3.5d | 28d | 0d | start no earlier than 2011-01-08 | 배영규 | 56h | 28h |
| 34 | 4.6.2 | 등록 | 1d | 2011-01-15 | 2011-01-15 | 33 |  |  | 28d | 0d |  | 배영규 | 8h |  |
| 35 | 4.7 | **Facebook App** | 1d | 2011-01-16 | 2011-01-16 |  |  |  | 28d |  |  |  | 8h |  |
| 36 | 4.7.1 | 사전 등록 및 테스트 | 1d | 2011-01-16 | 2011-01-16 | 34 |  |  | 28d |  |  | 배영규 | 8h |  |
| 37 | 5 | 테스트 | 5d | 2011-02-14 | 2011-02-18 | 8 |  |  | 0d |  |  | 배영규 | 40h |  |
| 38 | 6 | **출시** | 2d | 2011-02-19 | 2011-02-20 |  |  |  | 0d |  |  |  | 16h |  |
| 39 | 6.1 | Facebook App 등록 | 2d | 2011-02-19 | 2011-02-20 | 37 |  |  | 0d |  |  | 배영규 | 16h |  |
